# 模拟呼吸系统

Schedule from a web Gantt chart, 2024-12-23 to 2025-03-31.
Sundays are off

## Schedule

| ID | WBS | Task | Duration | Start | Finish | Complete | Status |
| --- | --- | --- | --- | --- | --- | --- | --- |
| 2 | 1 | **PC端软件开发 A** | 33d | 2024-12-23 | 2025-01-29 | 38% |  |
| 3 | 1.1 | **网页界面** | 18d | 2024-12-23 | 2025-01-11 | 66% |  |
| 4 | 1.1.1 | 页面布局 | 3d | 2024-12-23 | 2024-12-25 | 100% | done |
| 5 | 1.1.2 | 地图操作 | 4d | 2024-12-25 | 2024-12-28 | 100% | done |
| 6 | 1.1.3 | 离线地图 | 3d | 2024-12-27 | 2024-12-30 | 100% | done |
| 7 | 1.1.4 | 训练流程 | 2d | 2025-01-02 | 2025-01-03 | 50% |  |
| 8 | 1.1.5 | 评分系统 | 2d | 2024-12-31 | 2025-01-01 | 30% |  |
| 9 | 1.1.6 | 网页to服务器_通讯 | 4d | 2025-01-04 | 2025-01-08 | 10% |  |
| 10 | 1.1.7 | 本地配置文件 | 3d | 2025-01-09 | 2025-01-11 | 60% |  |
| 11 | 1.2 | **服务器程序** | 15d | 2025-01-13 | 2025-01-29 |  | waiting |
| 12 | 1.2.1 | 框架搭建 | 4d | 2025-01-13 | 2025-01-16 |  | waiting |
| 13 | 1.2.2 | WS网页通讯驱动 | 3d | 2025-01-17 | 2025-01-20 |  | waiting |
| 14 | 1.2.3 | USB串口驱动/wan口驱动 | 4d | 2025-01-21 | 2025-01-24 |  | waiting |
| 15 | 1.2.4 | 通讯协议 | 4d | 2025-01-25 | 2025-01-29 |  | waiting |
| 16 | 2 | **便携终端 B** | 21d | 2025-01-30 | 2025-02-22 |  | waiting |
| 17 | 2.1 | 数传/5G资料研究 | 4d | 2025-01-30 | 2025-02-03 |  | waiting |
| 18 | 2.2 | 数传/5G驱动 | 3d | 2025-02-03 | 2025-02-05 |  | waiting |
| 19 | 2.3 | 蓝牙驱动 | 2d | 2025-02-06 | 2025-02-07 |  | waiting |
| 20 | 2.4 | 电池电量 | 1d | 2025-02-08 | 2025-02-08 |  | waiting |
| 21 | 2.5 | GPS资料研究 | 4d | 2025-02-10 | 2025-02-13 |  | waiting |
| 22 | 2.6 | GPS驱动 | 2d | 2025-02-14 | 2025-02-15 |  | waiting |
| 23 | 2.7 | 通讯协议 | 3d | 2025-02-17 | 2025-02-19 |  | waiting |
| 24 | 2.8 | 整体逻辑 | 3d | 2025-02-20 | 2025-02-22 |  | waiting |
| 25 | 3 | **面罩 C** | 14d | 2025-02-24 | 2025-03-11 |  | waiting |
| 26 | 3.1 | 蓝牙驱动 | 1d | 2025-02-24 | 2025-02-24 |  | waiting |
| 27 | 3.2 | 电池电量 | 1d | 2025-02-25 | 2025-02-25 |  | waiting |
| 28 | 3.3 | 压力传感器资料研究 | 5d | 2025-02-27 | 2025-03-04 |  | waiting |
| 29 | 3.4 | 压力传感器驱动 | 4d | 2025-03-04 | 2025-03-07 |  | waiting |
| 30 | 3.5 | 整体逻辑 | 3d | 2025-03-08 | 2025-03-11 |  | waiting |

| ID | WBS | Task | Duration | Start | Finish | Status |
| --- | --- | --- | --- | --- | --- | --- |
| 31 | 4 | **联调阶段** | 17d | 2025-03-12 | 2025-03-31 | waiting |
| 32 | 4.1 | BC 联调 | 4d | 2025-03-12 | 2025-03-15 | waiting |
| 33 | 4.2 | AB联调 | 4d | 2025-03-15 | 2025-03-19 | waiting |
| 34 | 4.3 | ABC联调 | 10d | 2025-03-20 | 2025-03-31 | waiting |
